Schedule from MS Project, 2012-11-07 to 2012-12-12.
Microsoft

## Calendars

- 标准: Mon-Fri 08:00-12:00, 13:00-17:00; Sat-Sun off.

## Resources

| Resource |
| --- |
| 高娜 |
| 姜少辉 |
| 王燕 |
| 张勇辉 |

## Schedule

| ID | WBS | Task | Type | Duration | Start | Finish | Predecessors | Resources | Work |
| --- | --- | --- | --- | --- | --- | --- | --- | --- | --- |
| 1 | 1 | 项目界面交互需求设计，项目问题解决，项目跟踪 | manual | 26d | 2012-11-07 | 2012-12-12 |  | 张勇辉 | 208h |
| 2 | 2 | **快捷桌面模块开发** |  | 26d | 2012-11-07 | 2012-12-12 |  |  | 408h |
| 3 | 2.1 | 桌面界面交互布局 | manual | 4d | 2012-11-07 | 2012-11-12 |  | 高娜 | 32h |
| 4 | 2.2 | 图标拖拽排序 | manual | 2d | 2012-11-13 | 2012-11-14 | 3 | 高娜 | 16h |
| 5 | 2.3 | 图标跨桌面移动 | manual | 3d | 2012-11-15 | 2012-11-19 | 4 | 高娜 | 24h |
| 6 | 2.4 | 图标删除 | manual | 2d | 2012-11-20 | 2012-11-21 | 5 | 高娜 | 16h |
| 7 | 2.5 | 桌面删除 | manual | 2d | 2012-11-22 | 2012-11-23 | 6 | 高娜 | 16h |
| 8 | 2.6 | 添加图标界面实现 | manual | 4d | 2012-11-26 | 2012-11-29 | 7 | 高娜 | 32h |
| 9 | 2.7 | 数据同步接口设计实现 | manual | 3d | 2012-11-07 | 2012-11-09 |  | 姜少辉 | 24h |
| 10 | 2.8 | 加载后台图标数据 | manual | 3d | 2012-11-13 | 2012-11-15 | 3 | 姜少辉 | 24h |
| 11 | 2.9 | 功能测试追踪表编写及桌面切换和图标入口测试 | manual | 1d | 2012-11-16 | 2012-11-16 | 10 | 王燕 | 8h |
| 12 | 2.10 | <里程碑> 桌面切换和图标入口可用 | milestone, manual | 0d | 2012-11-16 | 2012-11-16 | 10 | 高娜; 姜少辉 |  |
| 13 | 2.11 | 桌面图标排序数据接口 | manual | 3d | 2012-11-16 | 2012-11-20 | 4 | 姜少辉 | 24h |
| 14 | 2.12 | 图片拖拽排序测试 | manual | 1d | 2012-11-21 | 2012-11-21 | 13 | 王燕 | 8h |
| 15 | 2.13 | 桌面图标数据删除操作接口 | manual | 3d | 2012-11-26 | 2012-11-28 | 7 | 姜少辉 | 24h |
| 16 | 2.14 | 图标数据删除及拖拽排序集成测试 | manual | 2d | 2012-11-29 | 2012-11-30 | 15 | 王燕 | 16h |
| 17 | 2.15 | 添加图标功能接口实现 | manual | 5d | 2012-11-30 | 2012-12-06 | 8 | 姜少辉 | 40h |
| 18 | 2.16 | 桌面切换、图标拖拽、图标添加、图标删除及图标入口集成测试 | manual | 2d | 2012-12-07 | 2012-12-10 | 17 | 王燕 | 16h |
| 19 | 2.17 | bug修改 | manual | 1d | 2012-12-10 | 2012-12-10 |  | 高娜; 姜少辉 | 16h |
| 20 | 2.18 | 打包 | manual | 1d | 2012-12-07 | 2012-12-07 | 17 | 高娜; 姜少辉 | 16h |
| 21 | 2.19 | 打包测试及bug修改 | manual | 2d | 2012-12-11 | 2012-12-12 | 20 | 王燕; 高娜; 姜少辉 | 48h |
| 22 | 2.20 | 编写测试报告 | manual | 1d | 2012-12-12 | 2012-12-12 |  | 王燕 | 8h |
